# 国际站全年经营规划

Schedule from a web Gantt chart, 2025-09-29 to 2026-11-30.
Saturdays and Sundays are off

## Schedule

| ID | WBS | Task | Type | Duration | Start | Finish | Predecessors | inPeople | Status |
| --- | --- | --- | --- | --- | --- | --- | --- | --- | --- |
| 2 | 1 | **2025年9月规划** |  | 2d | 2025-09-29 | 2025-09-30 |  |  |  |
| 3 | 1.1 | 国际站基础知识培训 |  | 2d | 2025-09-29 | 2025-09-30 |  | 唐逸 |  |
| 4 | 2 | **2025年10月规划** |  | 23d | 2025-10-01 | 2025-10-31 |  |  |  |
| 5 | 2.1 | 店铺装修 |  | 23d | 2025-10-01 | 2025-10-31 |  | 阿里装修团队 |  |
| 6 | 2.2 | 市场调研 |  | 12d | 2025-10-01 | 2025-10-16 |  | 唐逸、Amy |  |
| 7 | 2.3 | 经营计划设定 |  | 1d | 2025-10-17 | 2025-10-17 | 6 | 唐逸、Amy | waiting |
| 8 | 2.4 | SKU发品300 |  | 23d | 2025-10-01 | 2025-10-31 |  | Amy及其团队 |  |
| 9 | 2.5 | 店铺上线 | fixed end | 1d | 2025-10-31 | 2025-10-31 |  | Amy |  |
| 10 | 3 | 小满账号开通 | fixed end | 1d | 2025-10-31 | 2025-10-31 |  | Amy及其团队 |  |
| 11 | 4 | **2025年11月规划** |  | 21d | 2025-11-03 | 2025-12-01 |  |  |  |
| 12 | 4.1 | RFQs & 小满RFQs |  | 20d | 2025-11-03 | 2025-11-28 |  | Amy及其团队 |  |
| 13 | 4.2 | 新品发布与老品优化 |  | 20d | 2025-11-03 | 2025-11-28 |  | Amy及其团队 |  |
| 14 | 4.3 | **首周上线** |  | 5d | 2025-11-03 | 2025-11-07 |  |  |  |
| 15 | 4.3.1 | 沟通话术SOP |  | 5d | 2025-11-03 | 2025-11-07 |  | 唐逸、Amy |  |
| 16 | 4.3.2 | 熟悉平台操作 |  | 5d | 2025-11-03 | 2025-11-07 |  | Amy及其团队 |  |
| 17 | 4.4 | **备战促销** |  | 10d | 2025-11-10 | 2025-11-21 | 14 |  | waiting |
| 18 | 4.4.1 | 橱窗+优品+全站推广告 |  | 10d | 2025-11-10 | 2025-11-21 |  | Amy及其团队 | waiting |
| 19 | 4.5 | 动员 | fixed start | 1d | 2025-11-24 | 2025-11-24 | 17 | Amy及其团队 | waiting |
| 20 | 4.6 | 黑五大战 | fixed start | 6d | 2025-11-24 | 2025-12-01 | 17 |  | waiting |
| 21 | 5 | **2025年12月规划** |  | 23d | 2025-12-01 | 2025-12-31 |  |  |  |
| 22 | 5.1 | **黑五复盘与广告优化** |  | 1d | 2025-12-01 | 2025-12-01 |  | 唐逸、Amy及其团队 |  |
| 23 | 5.1.1 | 询盘分析 |  | 1d | 2025-12-01 | 2025-12-01 |  |  |  |
| 24 | 5.1.2 | 广告投产比分析 |  | 1d | 2025-12-01 | 2025-12-01 |  |  |  |
| 25 | 5.2 | 备战圣诞大促 |  | 10d | 2025-12-02 | 2025-12-15 | 22 |  | waiting |
| 26 | 5.3 | 圣诞大促 | fixed start | 12d | 2025-12-16 | 2025-12-31 | 25 |  | waiting |

Notes:
- 3: 培训国际站的基础操作知识、平台规则、各类工具的使用方式。
- 5: 299的新手启航包内包含了店铺装修、免费帮助发品50个
- 6: 通过站内外小工具以及站内趋势洞察来调研同行的水平、优秀的标杆案例
- 7: 依据调研结果出具一份全年的经营规划表
- 8: 首月发品至少500+ SKU，每个SKU的质量不低于4.5分。需要借助各种AI工具提高效率。发品借鉴之前的调研结果，先抄袭，再创新
- 9: 选定良辰吉日，正式上线店铺，开始计费
- 10: 开通5个小满的字账号，后面小满的RFQs报价是根据账号数来的。
- 12: 国际站每月的20个高质量RFQs，小满每天的25个采购机会都要报满。
- 13: 持续发布新品，要求每天至少10个新品的发布。直至产品SKU总数达到1000+。对于之前的老SKU，也要定期迭代优化。保障店内的优品、爆品的数量。
- 15: 制定并总结出一套客户接待的标准化流程以及标准化话术。后续需要不断的优化
- 16: 熟悉平台的操作、规则。了解发货的流程。
- 18: 下周就是黑色星期五，所以在这个时间节点开启广告推送，获取一波流量。全站推一经开启不要关闭，可以去调整，但是不能关。关了就平台就没有报效了。
- 19: 鼓舞士气
- 22: 对过去的一个月，复盘、优化

| ID | WBS | Task | Type | Duration | Start | Finish | Predecessors | inPeople | Status |
| --- | --- | --- | --- | --- | --- | --- | --- | --- | --- |
| 27 | 6 | **2026年1月规划** |  | 22d | 2026-01-01 | 2026-01-30 |  |  |  |
| 28 | 6.1 | 元旦促销 |  | 7d | 2026-01-01 | 2026-01-09 |  |  |  |
| 29 | 6.2 | **年终复盘** | fixed start | 1d | 2026-01-12 | 2026-01-12 | 28 | 唐逸、Amy及其团队 | waiting |
| 30 | 6.2.1 | 业务执行情况分析 |  | 1d | 2026-01-12 | 2026-01-12 |  |  | waiting |
| 31 | 6.2.2 | 业绩达成情况分析+业绩修订 |  | 1d | 2026-01-12 | 2026-01-12 |  |  | waiting |
| 32 | 6.3 | 正常经营 + 商品优化 + 各种SOP优化 |  | 14d | 2026-01-13 | 2026-01-30 | 29 | Amy及其团队 | waiting |
| 33 | 7 | **2026年2月规划** |  | 21d | 2026-02-02 | 2026-03-02 |  | ALL |  |
| 34 | 7.1 | 春节假期 |  | 15d | 2026-02-02 | 2026-02-20 |  |  |  |
| 35 | 7.2 | **团队内训** |  | 2d | 2026-02-23 | 2026-02-24 | 34 |  | waiting |
| 36 | 7.2.1 | 销售话术SOP内训 |  | 2d | 2026-02-23 | 2026-02-24 |  |  | waiting |
| 37 | 7.2.2 | 发品SOP内训 |  | 1d | 2026-02-23 | 2026-02-23 |  |  | waiting |
| 38 | 7.3 | 备战3月采购节 |  | 4d | 2026-02-25 | 2026-03-02 | 35 |  | waiting |
| 39 | 8 | **2026年3月规划** |  | 22d | 2026-03-02 | 2026-03-31 |  |  |  |
| 40 | 8.1 | 三月采购节 | fixed start | 22d | 2026-03-02 | 2026-03-31 |  |  |  |
| 41 | 9 | **2026年4月规划** |  | 22d | 2026-04-01 | 2026-04-30 |  |  |  |
| 42 | 9.1 | 三月采购节复盘 |  | 1d | 2026-04-01 | 2026-04-01 |  |  |  |
| 43 | 9.2 | 广告优化、优爆品优化 |  | 1d | 2026-04-02 | 2026-04-02 | 42 |  | waiting |
| 44 | 9.3 | 正常经营 |  | 20d | 2026-04-03 | 2026-04-30 | 43 |  | waiting |
| 45 | 10 | **2026年5月规划** |  | 22d | 2026-05-01 | 2026-06-01 |  |  |  |
| 46 | 10.1 | 滑雪运动淡季，可以清闲一些。或者拓展新的业务增长点 |  | 22d | 2026-05-01 | 2026-06-01 |  |  |  |
| 47 | 11 | **2026年6月规划** |  | 22d | 2026-06-01 | 2026-06-30 |  |  |  |
| 48 | 11.1 | 阿里各种培训活动参加 |  | 22d | 2026-06-01 | 2026-06-30 |  |  |  |
| 49 | 12 | **2026年7月规划** |  | 23d | 2026-07-01 | 2026-07-31 |  |  |  |
| 50 | 12.1 | 人才梯队建设 + 明年的规划 |  | 23d | 2026-07-01 | 2026-07-31 |  |  |  |

Notes:
- 29: 根据实际计划，调整业绩计划。
- 32: 根据新的计划、复盘情况，调整经营策略。
- 33: 休息放松一下

| ID | WBS | Task | Type | Duration | Start | Finish |
| --- | --- | --- | --- | --- | --- | --- |
| 51 | 13 | **2026年8月规划** |  | 21d | 2026-08-03 | 2026-08-31 |
| 52 | 13.1 | 备战9月采购节+阿里各种培训活动参加 |  | 21d | 2026-08-03 | 2026-08-31 |
| 53 | 14 | **2026年9月规划** |  | 22d | 2026-09-01 | 2026-09-30 |
| 54 | 14.1 | 9月采购节 | fixed start | 22d | 2026-09-01 | 2026-09-30 |
| 55 | 15 | **2026年10月规划** |  | 22d | 2026-10-01 | 2026-10-30 |
| 56 | 15.1 | 9月采购节复盘 |  | 22d | 2026-10-01 | 2026-10-30 |
| 57 | 16 | **2026年11月规划** |  | 21d | 2026-11-02 | 2026-11-30 |
| 58 | 16.1 | 续签 |  | 21d | 2026-11-02 | 2026-11-30 |
